Schedule from MS Project, 2010-05-24 to 2010-09-09, costs in zl.
FT

## Calendars

- Standardowy: Mon-Fri 09:00-13:00, 14:00-18:00; Sat-Sun off.

## Resources

| Resource | Group | Rate | Cost per use |
| --- | --- | --- | --- |
| Projekt manager | Analityk | 212.5 | 1700 |
| Analityk | Analityk | 175 | 1400 |
| Projektant DB | Infomatyka | 137.5 | 1100 |
| Architekt S.C. | Infomatyka | 137.5 | 1100 |
| Programista1 | Infomatyka | 150 | 1200 |
| Programista2 | Infomatyka | 120 | 960 |
| Tester | Infomatyka | 100 | 800 |
| Procownik1 | Firma |  |  |
| Pracownik2 | Firma |  |  |
| Kierownik Firmy | Firma |  |  |

## Schedule

| ID | WBS | Task | Type | Duration | Start | Finish | Predecessors | Total slack | Free slack | Constraint | Resources | Work | Cost |
| --- | --- | --- | --- | --- | --- | --- | --- | --- | --- | --- | --- | --- | --- |
| 1 | 1 | **Planowanie systemu (wymagania,specyfikacja,analiza)** |  | 19.5d? | 2010-05-24 | 2010-06-18 |  | 0.5d | 0d |  | Architekt S.C.; Programista1 | 1264h | 229,750 |
| 2 | 1.1 | **Analiza wymagań** |  | 7d? | 2010-05-24 | 2010-06-01 |  | 0.5d | 0d |  |  | 192h | 28,250 |
| 3 | 1.1.1 | Określenie misji gospodarczej |  | 0.5d | 2010-05-24 | 2010-05-24 |  | 9d |  |  | Projekt manager; Pracownik2; Analityk; Kierownik Firmy | 16h | 4,650 |
| 4 | 1.1.2 | Analiz istotnych czynników powodzenia |  | 1d? | 2010-05-24 | 2010-05-24 |  | 8.5d |  |  | Pracownik2; Analityk; Kierownik Firmy | 24h | 2,800 |
| 5 | 1.1.3 | Analiza konkurencyjnych firm |  | 1d? | 2010-05-24 | 2010-05-24 |  | 8.5d |  |  | Pracownik2; Analityk; Kierownik Firmy | 24h | 2,800 |
| 6 | 1.1.4 | Analiza zwiękrzenia wartości usługi/konkurencyjność |  | 3d | 2010-05-24 | 2010-05-26 |  | 0.5d | 0d |  | Pracownik2; Analityk; Kierownik Firmy | 72h | 5,600 |
| 7 | 1.1.5 | Udokumentowanie wyników analizy |  | 3d | 2010-05-27 | 2010-05-31 | 6 | 0.5d | 0d |  | Projekt manager; Analityk | 48h | 12,400 |
| 8 | 1.1.6 | Potwierdzenie dokumentów analizy(sponsor) | milestone | 1d? | 2010-06-01 | 2010-06-01 | 7 | 0.5d | 0d |  | Kierownik Firmy | 8h |  |
| 9 | 1.2 | **Określenie architektury systemu** |  | 4d | 2010-06-02 | 2010-06-07 | 8 | 0.5d | 0d |  |  | 296h | 61,050 |
| 10 | 1.2.1 | Określenie zasobów danych |  | 4d | 2010-06-02 | 2010-06-07 |  | 0.5d |  | start no earlier than 2010-06-01 | Architekt S.C.; Projekt manager; Projektant DB | 96h | 19,500 |
| 11 | 1.2.2 | Określenie rodzajów zastosowań sieci komputerowej i infrastruktury technicznej w aspekcie procesów gospodarczych organizacji |  | 4d | 2010-06-02 | 2010-06-07 |  | 0.5d |  |  | Architekt S.C.; Projekt manager; Projektant DB | 96h | 19,500 |
| 12 | 1.2.3 | Stworzenie strategicnzego planu informatyzacji (Infoplan) |  | 4d | 2010-06-02 | 2010-06-07 |  | 0.5d |  |  | Architekt S.C.; Projekt manager; Projektant DB | 96h | 19,500 |
| 13 | 1.2.4 | Zatwierdzenie planu informatyzacji (project manager, sponsor) | milestone | 0.5d | 2010-06-07 | 2010-06-07 |  | 1d |  | start no earlier than 2010-06-07 | Projekt manager; Kierownik Firmy | 8h | 2,550 |
| 14 | 1.3 | **Analiza Wymagań użytkownika** |  | 2d | 2010-06-02 | 2010-06-03 | 2 | 2.5d | 2d |  |  | 248h | 25,200 |
| 15 | 1.3.1 | Identyfikacja i charakterystyka problemów i celów |  | 2d | 2010-06-02 | 2010-06-03 |  | 2.5d |  |  | Analityk; Pracownik2 | 32h | 4,200 |
| 16 | 1.3.2 | Identyfikacja potrzeb użytkownika |  | 2d | 2010-06-02 | 2010-06-03 |  | 2.5d |  |  | Analityk; Procownik1 | 32h | 4,200 |
| 17 | 1.3.3 | Zbieranie informacji od pracowników na temat funkcjonowania nowego systemu |  | 2d | 2010-06-02 | 2010-06-03 |  | 2.5d |  |  | Analityk; Pracownik2; Procownik1; Kierownik Firmy | 64h | 4,200 |
| 18 | 1.3.4 | Przygotowanie wzorów dokumentówwystępujących w firmie |  | 2d | 2010-06-02 | 2010-06-03 |  | 2.5d |  |  | Analityk; Pracownik2 | 32h | 4,200 |
| 19 | 1.3.5 | Studium wykonalności systemu informatycznego ( Pod względem technicznym, organizacyjnym, prawnym, ekonomicznym) |  | 2d | 2010-06-02 | 2010-06-03 |  | 2.5d |  |  | Analityk; Pracownik2; Kierownik Firmy | 48h | 4,200 |
| 20 | 1.3.6 | Definicja i ustalenie priorytetów zidentyfikowanych potrzeb użytkowników |  | 2d | 2010-06-02 | 2010-06-03 |  | 2.5d |  |  | Analityk; Kierownik Firmy | 32h | 4,200 |
| 21 | 1.3.7 | Potwierdzenie dokumentu wymagań | milestone | 1d | 2010-06-03 | 2010-06-03 |  | 2.5d |  | start no earlier than 2010-06-03 | Kierownik Firmy | 8h |  |
| 22 | 1.4 | **Powołanie zespołu odpowiedzialnego za projekt** |  | 2d? | 2010-06-08 | 2010-06-09 | 14, 9 | 0.5d | 0d |  |  | 80h | 22,600 |
| 23 | 1.4.1 | Określenie umiejętności wewnętrznych |  | 1d? | 2010-06-08 | 2010-06-08 |  | 1.5d |  |  | Analityk; Architekt S.C. | 16h | 5,000 |
| 24 | 1.4.2 | Analiza oraz określenie zapotrzebowania na zasoby ludzkie w projekcie |  | 1d? | 2010-06-08 | 2010-06-08 |  | 1.5d |  |  | Analityk; Architekt S.C. | 16h | 5,000 |
| 25 | 1.4.3 | Określenie obowiązków poszczególnych członków zaspołu |  | 2d | 2010-06-08 | 2010-06-09 |  | 0.5d |  |  | Analityk; Architekt S.C.; Projekt manager | 48h | 12,600 |

| ID | WBS | Task | Type | Duration | Start | Finish | Predecessors | Total slack | Free slack | Resources | Work | Cost |
| --- | --- | --- | --- | --- | --- | --- | --- | --- | --- | --- | --- | --- |
| 26 | 1.5 | **Stworzenie planu projketu** |  | 5.5d? | 2010-06-10 | 2010-06-17 | 22 | 0.5d |  |  | 120h | 42,100 |
| 27 | 1.5.1 | Określenie budżetu projketu |  | 1d? | 2010-06-10 | 2010-06-10 |  | 0.5d | 0d | Projekt manager; Analityk | 16h | 6,200 |
| 28 | 1.5.2 | Określenie ram czasowych |  | 1d | 2010-06-11 | 2010-06-11 | 27 | 5d |  | Projekt manager; Analityk | 16h | 6,200 |
| 29 | 1.5.3 | Określenie ograniczeń w realizacji projketu |  | 2d | 2010-06-11 | 2010-06-14 | 27 | 0.5d | 0d | Analityk; Architekt S.C. | 32h | 7,500 |
| 30 | 1.5.4 | Stworzenie karty projketu |  | 1d? | 2010-06-15 | 2010-06-15 | 29 | 3d |  | Projekt manager | 8h | 3,400 |
| 31 | 1.5.5 | Zdefiniowanie struktury podziału prac |  | 1d? | 2010-06-11 | 2010-06-11 | 27 | 5d |  | Architekt S.C.; Projekt manager | 16h | 5,600 |
| 32 | 1.5.6 | Zdefiniowanie harmonogramu z uwzględnieniem kamieni milowych |  | 0.5d? | 2010-06-15 | 2010-06-15 | 29 | 0.5d | 0d | Architekt S.C.; Projekt manager | 8h | 4,200 |
| 33 | 1.5.7 | Zdefiniowanie rozwiązań awaryjnych |  | 1d? | 2010-06-15 | 2010-06-16 | 32 | 0.5d | 0d | Architekt S.C.; Projekt manager | 16h | 5,600 |
| 34 | 1.5.8 | Zatwierdzenie planu projketu |  | 1d? | 2010-06-16 | 2010-06-17 | 33 | 0.5d | 0d | Projekt manager | 8h | 3,400 |
| 35 | 1.6 | Zatwierdzenie planu systemu (zarząd firmy) | milestone | 1d | 2010-06-17 | 2010-06-18 | 34 | 0.5d | 0d | Projekt manager; Kierownik Firmy | 16h | 3,400 |
| 36 | 2 | **Projketowanie Systemu** |  | 22d? | 2010-06-18 | 2010-07-20 | 1, 35 | 0.5d | 0d |  | 304h | 63,750 |
| 37 | 2.1 | **Projketowanie ogólne (logiczne)** |  | 15d? | 2010-06-18 | 2010-07-09 |  | 0.5d | 0d |  | 216h | 40,650 |
| 38 | 2.1.1 | Projekt struktury funkcjonalnej systemu (dekompozycja funkcjonalna) |  | 5d | 2010-06-18 | 2010-06-25 |  | 0.5d | 0d | Analityk | 40h | 8,400 |
| 39 | 2.1.2 | Projekt dialogu użytkownika z komputerem( interfejsy użytkownika) |  | 9d | 2010-06-25 | 2010-07-08 | 38 | 0.5d | 0d | Architekt S.C. | 72h | 11,000 |
| 40 | 2.1.3 | Projekt wejść wyjść systemu (formatki i zestawienia) |  | 5d | 2010-06-25 | 2010-07-02 | 38 | 4.5d | 4d | Architekt S.C. | 40h | 6,600 |
| 41 | 2.1.4 | Projekt modeli procesów gospodarczych |  | 3.5d | 2010-06-25 | 2010-06-30 | 38 | 6d | 5.5d | Analityk; Architekt S.C. | 56h | 11,250 |
| 42 | 2.1.5 | Zatwierdzenie projektu ogólnego(Project manager) |  | 1d? | 2010-07-08 | 2010-07-09 | 39, 41, 40 | 0.5d |  | Projekt manager | 8h | 3,400 |
| 43 | 2.2 | **Projektowanie techniczne (fizyczne)** |  | 6d? | 2010-07-09 | 2010-07-19 | 37 | 2d |  |  | 80h | 19,700 |
| 44 | 2.2.1 | Projektowanie fizyczne bazy danych i plików danych |  | 2d | 2010-07-09 | 2010-07-13 |  | 2d | 0d | Projektant DB | 16h | 3,300 |
| 45 | 2.2.2 | Projektowanie struktury oprogramowania i poszczególnych części systemu |  | 3d | 2010-07-13 | 2010-07-16 | 44 | 2d | 0d | Architekt S.C.; Analityk | 48h | 10,000 |
| 46 | 2.2.3 | Projektowanie rozpraszania systemu (dostępność zasobów danych i oprogramowanie w sieci) |  | 1d? | 2010-07-13 | 2010-07-14 | 44 | 5.5d |  | Architekt S.C. | 8h | 2,200 |
| 47 | 2.2.4 | Zatwierdzenie projektu technicznego (projekt manager) |  | 1d? | 2010-07-16 | 2010-07-19 | 45 | 1.5d | 0d | Projekt manager; Architekt S.C. | 8h | 4,200 |
| 48 | 2.3 | Zatwierdzenie projektu systemu (projekt manager) | milestone | 1d? | 2010-07-19 | 2010-07-20 | 47 | 1.5d | 0d | Projekt manager | 8h | 3,400 |
| 49 | 3 | **Prace developerskie (Implementacja)** |  | 16.5d? | 2010-07-20 | 2010-08-11 | 36, 48 | 0d |  |  | 272h | 47,400 |
| 50 | 3.1 | **Programowanie bazy danych w języku SQL** |  | 1d? | 2010-07-20 | 2010-07-21 | 44 | 15.5d |  |  | 16h | 4,600 |
| 51 | 3.1.1 | Utworzenie bazy danych zgodnie z modelem danych |  | 1d? | 2010-07-20 | 2010-07-21 |  | 15.5d |  | Projektant DB | 8h | 2,200 |
| 52 | 3.1.2 | Utworzenie procedury synchronizacji baz (agent, transakcje) |  | 1d? | 2010-07-20 | 2010-07-21 |  | 15.5d |  | Programista1 | 8h | 2,400 |

| ID | WBS | Task | Type | Duration | Start | Finish | Predecessors | Total slack | Free slack | Constraint | Resources | Work | Cost |
| --- | --- | --- | --- | --- | --- | --- | --- | --- | --- | --- | --- | --- | --- |
| 53 | 3.2 | **Stworzenie szaty graficznej** |  | 3d | 2010-07-20 | 2010-07-23 |  | 3.5d |  |  |  | 48h | 9,600 |
| 54 | 3.2.1 | Projket szaty graficznej |  | 3d | 2010-07-20 | 2010-07-23 |  | 13.5d |  |  | Programista1 | 24h | 4,800 |
| 55 | 3.2.2 | Implementacja grafiki |  | 3d | 2010-07-20 | 2010-07-23 |  | 3.5d | 0d |  | Programista1 | 24h | 4,800 |
| 56 | 3.3 | **Programowanie aplikacji** |  | 14d | 2010-07-22 | 2010-08-10 |  | 0d |  |  |  | 192h | 27,600 |
| 57 | 3.3.1 | Programowanie interfejsu użytkownika |  | 10d | 2010-07-23 | 2010-08-06 | 55 | 3.5d |  |  | Programista1 | 80h | 13,200 |
| 58 | 3.3.2 | Programowanie Logiki |  | 14d | 2010-07-22 | 2010-08-10 |  | 0d |  | start no earlier than 2010-07-22 | Programista2 | 112h | 14,400 |
| 59 | 3.4 | Odbiór prac developerskich | milestone | 1d | 2010-08-11 | 2010-08-11 | 58 | 0d |  |  | Architekt S.C.; Projekt manager | 16h | 5,600 |
| 60 | 4 | **Testowanie oraz wykonywanie dokumentacji** |  | 10d? | 2010-08-12 | 2010-08-25 | 49 | 11d |  |  |  | 152h | 31,920 |
| 61 | 4.1 | **Testowanie oprogramowania** |  | 10d | 2010-08-12 | 2010-08-25 | 49 | 11d |  |  |  | 88h | 12,100 |
| 62 | 4.1.1 | Stworzenie środowiska testowego |  | 2d | 2010-08-12 | 2010-08-13 |  | 19d |  |  | Architekt S.C. | 16h | 3,300 |
| 63 | 4.1.2 | Stworzenie planu testów |  | 6d | 2010-08-12 | 2010-08-25 |  | 11d |  |  | Tester; Analityk; Procownik1 | 72h | 8,800 |
| 64 | 4.2 | **Tworzenie dokumentacji** |  | 3d? | 2010-08-12 | 2010-08-16 |  | 17d |  |  |  | 56h | 16,420 |
| 65 | 4.2.1 | Tworzenie dokumentacji systemowej oraz konfiguracji systemu |  | 1d? | 2010-08-12 | 2010-08-12 |  | 17d | 0d |  | Programista1 | 8h | 2,400 |
| 66 | 4.2.2 | Tworzenie dokumentacji dla użytkownika |  | 1d? | 2010-08-12 | 2010-08-12 |  | 17d | 0d |  | Analityk; Programista2 | 16h | 4,720 |
| 67 | 4.2.3 | Opracowanie szkoleń dla użytkowników systemu |  | 2d | 2010-08-13 | 2010-08-16 | 65, 66 | 17d | 0d |  | Analityk; Projekt manager | 32h | 9,300 |
| 68 | 4.3 | Zakończenie fazy testów oraz dokumentacji - raport końcowy |  | 1d? | 2010-08-17 | 2010-08-17 | 67 | 17d |  |  | Projekt manager | 8h | 3,400 |
| 69 | 5 | **Wdrożenie** |  | 18d? | 2010-08-12 | 2010-09-06 | 59, 49 | 0d |  |  |  | 340h | 41,510 |
| 70 | 5.1 | Instalownie aplikacji |  | 1d? | 2010-08-12 | 2010-08-12 |  | 0d |  |  | Architekt S.C.; Analityk [25%]; Programista1 [25%] | 12h | 3,500 |
| 71 | 5.2 | Konfiguracja aplikacji |  | 3d | 2010-08-13 | 2010-08-23 | 70 | 0d |  |  | Architekt S.C.; Analityk [25%]; Programista1 [25%] | 24h | 5,250 |
| 72 | 5.3 | Wprowadzanie danych |  | 5d | 2010-08-24 | 2010-08-30 | 71 | 0d |  |  | Analityk; Pracownik2; Programista2 | 120h | 14,160 |
| 73 | 5.4 | Szkolenie uzytkowników |  | 5d | 2010-08-31 | 2010-09-06 | 72 | 0d |  |  | Analityk; Projekt manager; Pracownik2; Procownik1 | 160h | 18,600 |
| 74 | 5.5 | Odbiór wdrożenia | milestone | 1d? | 2010-08-31 | 2010-08-31 | 72 | 4d |  |  | Pracownik2; Procownik1; Kierownik Firmy | 24h |  |
| 75 | 6 | **Finalizowanie prac projektowych** |  | 3d | 2010-09-07 | 2010-09-09 | 69 | 0d |  |  |  | 104h | 7,600 |
| 76 | 6.1 | Uzupełnienie dokumentacji |  | 2d | 2010-09-07 | 2010-09-08 |  | 1d |  | start no earlier than 2010-06-11 | Analityk | 16h | 4,200 |
| 77 | 6.2 | Testowanie odbiorcze |  | 3d | 2010-09-07 | 2010-09-09 |  | 0d |  |  | Procownik1; Pracownik2; Kierownik Firmy | 72h |  |
| 78 | 6.3 | Podpisanie protokołu odbioru systemu (zarząd firmy) |  | 1d | 2010-09-07 | 2010-09-07 |  | 2d |  |  | Projekt manager; Kierownik Firmy | 16h | 3,400 |
